# 车载测试公有云版研发及上线

How a schedule from a web Gantt chart changed from version to version. A marks actual dates.

## Version 1 (saved 2025-05-29)

| ID | WBS | Task | Duration | Start | Finish | Complete |
| --- | --- | --- | --- | --- | --- | --- |
| 2 | 1 | **车载测试公有云V0.1版开发及测试（启动版）** | 3d | 2025-04-28 | 2025-04-30 | 100% |
| 3 |  | 产品引导页面开发 | 2d | 2025-04-28 | 2025-04-29 | 100% |
| 4 |  | 用户许可动态配置工具开发 | 2d | 2025-04-29 | 2025-04-30 | 100% |
| 5 |  | 车载公有云V0.1版集成与测试 | 1d | 2025-04-30 | 2025-04-30 | 100% |
| 6 |  | 车载公有云V0.1版演示和输出 | 1d | 2025-04-30 | 2025-04-30 | 100% |
| 7 | 2 | **车载测试公有云V0.2版开发及测试（基本功能版）** | 29d | 2025-04-28 | 2025-05-30 |  |
| 8 | 2.1 | **BCM相关示例项目设计与验证** | 14d | 2025-04-28 | 2025-05-13 |  |
| 9 |  | BCM相关资料知识学习 | 1d | 2025-04-28 | 2025-04-28 |  |
| 10 |  | 车窗控制相关协议和用例编写 | 2d | 2025-04-29 | 2025-04-30 |  |
| 11 |  | 门锁控制相关协议和用例编写 | 1d | 2025-05-06 | 2025-05-06 |  |
| 12 |  | 内灯控制相关协议和用例编写 | 1d | 2025-05-07 | 2025-05-07 |  |
| 13 |  | 外灯控制相关协议和用例编写 | 1d | 2025-05-08 | 2025-05-08 |  |
| 14 |  | 雨刮控制相关协议和用例编写 | 1d | 2025-05-09 | 2025-05-09 |  |
| 15 |  | BCM测试相关许可配置文件编写（基于已有测试机器人） | 1d | 2025-05-10 | 2025-05-10 |  |
| 16 |  | BCM示例项目测试验证 | 2d | 2025-05-12 | 2025-05-13 |  |
| 17 | 2.2 | **Vector VN7640配套功能开发和验证** | 10d | 2025-05-08 | 2025-05-19 |  |
| 18 |  | VN7640环境搭建及配合CANoe和CANape的使用 | 2d | 2025-05-08 | 2025-05-09 |  |
| 19 |  | Vector CAN/CANFD测试机器人的开发与调试 | 2d | 2025-05-10 | 2025-05-12 |  |
| 20 |  | Vector LIN测试机器人的开发与调试 | 2d | 2025-05-13 | 2025-05-14 |  |
| 21 |  | Vector FlexRay测试机器人的开发与调试 | 2d | 2025-05-15 | 2025-05-16 |  |
| 22 |  | Vector 以太网测试机器人的开发与调试 | 2d | 2025-05-17 | 2025-05-19 |  |
| 23 | 2.3 | **基于Vector VN7640验证BCM项目** | 8d | 2025-05-20 | 2025-05-28 |  |
| 24 |  | 许可文件的编写与打包调试 | 3d | 2025-05-20 | 2025-05-22 |  |
| 25 |  | 测试与修复产品功能问题 | 5d | 2025-05-23 | 2025-05-28 |  |
| 26 | 2.4 | **树莓派测试机器人开发** | 8d | 2025-05-06 | 2025-05-14 |  |
| 27 |  | GPIO测试机器人开发 | 1d | 2025-05-06 | 2025-05-06 |  |
| 28 |  | LIN机器人开发 | 2d | 2025-05-07 | 2025-05-08 |  |
| 29 |  | 树莓派车载电压适配 | 5d | 2025-05-09 | 2025-05-14 |  |
| 30 |  | 树莓派Antbot测试及问题修复 | 4d | 2025-05-09 | 2025-05-13 |  |
| 31 |  | 基于树莓派验证BCM项目 | 5d | 2025-05-15 | 2025-05-20 |  |
| 32 |  | 前端页面局部调整 | 9d | 2025-05-06 | 2025-05-15 |  |
| 33 |  | 车载公有云V0.2版集成与测试 | 1d | 2025-05-06 | 2025-05-06 |  |
| 34 |  | 车载测试公有云V0.2版本演示与输出 | 1d | 2025-05-29 | 2025-05-29 |  |
| 35 | 2.9 | **UTP前端切换成Vue** | 21d | 2025-05-07 | 2025-05-30 |  |
| 36 |  | 脚本/用例编辑页面的实现 | 7d | 2025-05-07 | 2025-05-14 |  |
| 37 |  | 协议管理页面的实现 | 3d | 2025-05-14 | 2025-05-16 |  |
| 38 |  | 监控(采集/激励）页面的实现 | 4d | 2025-05-19 | 2025-05-22 |  |
| 39 |  | 测试集页面的实现 | 3d | 2025-05-22 | 2025-05-24 |  |
| 40 |  | 测试与问题修复 | 5d | 2025-05-26 | 2025-05-30 |  |
| 41 | 2.10 | **前后端执行过程优化** | 1d | 2025-05-26 | 2025-05-26 |  |
| 42 |  | 支持同一个引擎多次执行（一个前端页面对应一个引擎） | 1d | 2025-05-26 | 2025-05-26 |  |
| 43 |  | 支持直接传递命令进行执行 | 1d | 2025-05-26 | 2025-05-26 |  |
| 44 |  | 命令保存成json格式 | 1d | 2025-05-26 | 2025-05-26 |  |
| 45 | 2.11 | **车载测试页面布局及调研** | 11d | 2025-05-19 | 2025-05-30 |  |
| 46 |  | 主页面布局（总线仿真、HIL测试、标定、...） | 4d | 2025-05-19 | 2025-05-22 |  |
| 47 |  | 标定图形组件的调研和初步实现 | 5d | 2025-05-26 | 2025-05-30 |  |
| 48 | 3 | **车载测试公有云V0.3版开发及测试（全功能版）** | 48d | 2025-05-06 | 2025-06-30 |  |
| 49 | 3.1 | **标定功能开发与测试** | 1d | 2025-05-06 | 2025-05-06 |  |
| 50 | 3.1.1 | **跑通标定基本功能（核心协议功能）** | 1d | 2025-05-06 | 2025-05-06 |  |
| 51 |  | 实现A2L文件解析器并调整convertorMgr | 1d | 2025-05-06 | 2025-05-06 |  |
| 52 |  | 编写XCP协议和公共逻辑库 | 1d | 2025-05-06 | 2025-05-06 |  |
| 53 |  | 基于A2L和XCP调通基本功能 | 1d | 2025-05-06 | 2025-05-06 |  |
| 54 | 3.1.2 | **测量和标定相关UI设计** | 1d | 2025-05-06 | 2025-05-06 |  |
| 55 |  | 参考CANape实现Graphic窗口 | 1d | 2025-05-06 | 2025-05-06 |  |
| 56 |  | 参考CANape实现Data窗口 | 1d | 2025-05-06 | 2025-05-06 |  |
| 57 |  | 参考CANape实现Map窗口 | 1d | 2025-05-06 | 2025-05-06 |  |
| 58 |  | 参考CAnape实现Text窗口 | 1d | 2025-05-06 | 2025-05-06 |  |
| 59 | 3.1.2.5 | **执行过程改进** | 1d | 2025-05-06 | 2025-05-06 |  |
| 60 |  | 支持持久引擎（同前端生命周期一致） | 1d | 2025-05-06 | 2025-05-06 |  |
| 61 |  | 支持同一个引擎多并发执行 | 1d | 2025-05-06 | 2025-05-06 |  |
| 62 |  | 支持直接执行命令 | 1d | 2025-05-06 | 2025-05-06 |  |
| 63 |  | 支持将通用协议解析作为引擎扩展模块（不依赖具体硬件） | 1d | 2025-05-06 | 2025-05-06 |  |
| 64 | 3.1.2.5.5 | **标定主页面实现** | 1d | 2025-05-06 | 2025-05-06 |  |
| 65 |  | 支持 | 1d | 2025-05-06 | 2025-05-06 |  |
| 66 |  | 支持将 | 1d | 2025-05-06 | 2025-05-06 |  |
| 67 |  | 校准功能开发与测试 | 18d | 2025-05-21 | 2025-06-10 |  |
| 68 |  | 更多ECU测试项目 | 19d | 2025-05-21 | 2025-06-11 |  |
| 69 |  | 支持Simulink模型动态库 | 7d | 2025-05-13 | 2025-05-20 |  |
| 70 |  | 支持Blocky生成Julia语言 | 7d | 2025-05-13 | 2025-05-20 |  |
| 71 |  | 编写常用ECU仿真算法 | 31d | 2025-05-20 | 2025-06-24 |  |

| ID | WBS | Task | Duration | Start | Finish |
| --- | --- | --- | --- | --- | --- |
| 72 |  | 产品集成与测试 | 10d | 2025-06-17 | 2025-06-27 |
| 73 |  | 车载公有云V0.3版演示和输出 | 1d | 2025-06-30 | 2025-06-30 |
| 74 | 4 | **车载测试公有云V0.4版开发及测试（Linux实时版）** | 94d | 2025-04-14 | 2025-07-31 |
| 75 |  | 基于Linux(RT)的实时版研发 | 41d | 2025-04-14 | 2025-05-30 |
| 76 |  | LinuxRT实时版的集成与测试 | 23d | 2025-06-02 | 2025-06-27 |
| 77 |  | LinuxRT实时版的演示和输出 | 27d | 2025-07-01 | 2025-07-31 |
| 78 | 5 | **车载测试公有云V0.5版开发及测试（VxWorks实时版）** | 52d | 2025-06-02 | 2025-07-31 |
| 79 |  | 基于VxWorks的实时版研发 | 52d | 2025-06-02 | 2025-07-31 |
| 80 |  | VxWorks实时版集成和测试 | 52d | 2025-08-01 | 2025-09-30 |
| 81 |  | LinuxRT实时版的演示和输出 | 27d | 2025-10-01 | 2025-10-31 |

## Version 2 (saved 2025-05-29)

Last finish stays 2025-10-31.

Added:

| ID | Task | Duration | Start | Finish |
| --- | --- | --- | --- | --- |
| 82 | **车载以太网V0.6开发与测试** | 45d | 2025-08-01 | 2025-09-22 |
| 83 | SOME/IP开发与测试 | 13d | 2025-08-01 | 2025-08-15 |
| 84 | DOIP开发与测试 | 12d | 2025-08-18 | 2025-08-30 |
| 85 | DDS开发与测试 | 13d | 2025-09-01 | 2025-09-15 |
| 86 | XMPP, MQTT开发与测试 | 6d | 2025-09-16 | 2025-09-22 |
| 87 | K-Line | 1d | 2025-04-14 | 2025-04-14 |
| 88 | J1587 | 1d | 2025-04-14 | 2025-04-14 |
| 89 | J1939 | 1d | 2025-04-14 | 2025-04-14 |
| 90 | J1708 | 1d | 2025-04-14 | 2025-04-14 |

Changed:

| ID | Task | Complete |
| --- | --- | --- |
| 2 | **车载测试公有云V0.1版开发及测试（启动版）** | 100% → 67% |
